# OCSICO - Strativia Basic project WP

How a schedule from MS Project changed from version to version. A marks actual dates.

## Version 1 (saved 2013-10-21)

Note of the change: fix

| ID | WBS | Task | Duration | Start | Finish | Predecessors | Total float | Constraint |
| --- | --- | --- | --- | --- | --- | --- | --- | --- |
| 1 | 1 | **SafeStart App & Web-server Project** | 98.5d | 2013-07-10 | 2013-11-26 |  | 0d |  |
| 2 | 1.1 | **Milestones** | 47.88d | 2013-08-26 | 2013-10-30 |  | 17.5d |  |
| 3 |  | Mobile app UI designed and approved; Accounts and Users management functionality done | 0d | 2013-08-26 | 2013-08-26 |  | 47.88d | start no earlier than 2013-08-26 |
| 4 |  | Beta version release | 0d | 2013-09-25 | 2013-09-25 | 76 | 42.5d |  |
| 5 |  | Final release | 0d | 2013-10-30 | 2013-10-30 | 85 | 17.5d |  |
| 6 | 1.2 | **Analysis and planning** | 4d | 2013-07-10 | 2013-07-15 |  | 22.5d |  |
| 7 |  | Requirements analysis and discussions | 2d | 2013-07-10 | 2013-07-11 |  | 22.5d |  |
| 8 |  | Project plan and its updates | 0d | 2013-07-11 | 2013-07-11 | 7 | 22.5d |  |
| 9 |  | Test plan & cases | 4d | 2013-07-10 | 2013-07-15 |  | 94.5d |  |
| 10 | 1.3 | **Design and HTML coding** | 14.5d | 2013-07-12 | 2013-08-01 | 8 | 22.5d |  |
| 11 |  | Graphical design | 7.5d | 2013-07-12 | 2013-07-23 |  | 22.5d |  |
| 12 |  | GUI Drawing | 2d | 2013-07-23 | 2013-07-25 | 11 | 22.5d |  |
| 13 |  | Approval with customer | 0d | 2013-07-25 | 2013-07-25 | 12 | 22.5d |  |
| 14 |  | Html coding (create theme for Sencha Touch) | 5d | 2013-07-25 | 2013-08-01 | 13 | 22.5d |  |
| 15 | 1.4 | **Development** | 31.5d | 2013-08-01 | 2013-09-13 | 10 | 0d |  |
| 16 | 1.4.1 | **Backend (Server REST API)** | 20.25d | 2013-08-01 | 2013-08-29 |  | 11.25d |  |
| 17 |  | Database structure | 1.5d | 2013-08-01 | 2013-08-02 |  | 30d |  |
| 18 |  | System architecture (based on Zend Framework 2 module skeleton) | 1d | 2013-08-05 | 2013-08-05 |  | 33.5d |  |
| 19 |  | ACL (based on existing module for Zend Framework 2) | 0.75d | 2013-08-06 | 2013-08-06 |  | 32.75d |  |
| 20 |  | Auth | 0.5d | 2013-08-06 | 2013-08-07 |  | 32.25d |  |
| 21 |  | API Methods (based on existing module for Zend Framework 2) | 1.5d | 2013-08-07 | 2013-08-08 |  | 30.75d |  |
| 22 |  | PDF reports/documents generation (simple temlate with company logo) | 0.75d | 2013-08-08 | 2013-08-09 |  | 30d |  |
| 23 |  | Push notifications Mobile devices | 8.75d | 2013-08-09 | 2013-08-22 |  | 21.25d |  |
| 24 |  | Email notifications (based on existing module for Zend Framework 2) | 0.75d | 2013-08-22 | 2013-08-22 |  | 20.5d |  |
| 25 |  | Background jobs and multiple queues (based on existing module for Zend Framework 2) | 1.5d | 2013-08-23 | 2013-08-26 |  | 19d |  |
| 26 |  | Caching | 1.5d | 2013-08-26 | 2013-08-27 |  | 17.5d |  |
| 27 |  | Cron tasks (we will create only script for call API method via console) | 0.25d | 2013-08-28 | 2013-08-28 |  | 17.25d |  |
| 28 |  | Unit tests (cover only the basic functionality) | 1.5d | 2013-08-28 | 2013-08-29 |  | 15.75d |  |
| 29 | 1.4.2 | **Web Frontend** | 31.5d | 2013-08-01 | 2013-09-13 | 8 | 0d |  |
| 30 |  | Client side architecture and layout (based on Sencha Touch application) | 2d | 2013-08-01 | 2013-08-05 |  | 29.5d |  |
| 31 |  | Sign in\Sign up page (based on Sencha Touch components) | 2d | 2013-08-05 | 2013-08-07 |  | 32d |  |
| 32 |  | Panel access according to ACL | 1.5d | 2013-08-07 | 2013-08-08 |  | 30.5d |  |
| 33 |  | System settings panel (based on Sencha Touch components) | 1d | 2013-08-09 | 2013-08-09 |  | 29.5d |  |
| 34 |  | Accounts management (based on Sencha Touch components) | 2d | 2013-08-12 | 2013-08-13 |  | 27.5d |  |
| 35 |  | e-Commerce integration (simple module if needed) | 0d | 2013-08-01 | 2013-08-01 |  | 36d |  |
| 36 |  | Account settings | 1d | 2013-08-14 | 2013-08-14 |  | 26.5d |  |
| 37 |  | User moderation and subscription (based on Sencha Touch components) | 2d | 2013-08-15 | 2013-08-16 |  | 24.5d |  |
| 38 |  | User settings (profile) (based on Sencha Touch components) | 1d | 2013-08-19 | 2013-08-19 |  | 23.5d |  |
| 39 |  | Custom field for vehicle (based on Sencha Touch components) | 3d | 2013-08-20 | 2013-08-22 |  | 20.5d |  |
| 40 |  | Vehicles management (based on Sencha Touch components) | 3d | 2013-08-23 | 2013-08-27 |  | 17.5d |  |
| 41 |  | Alerts notification | 2d | 2013-08-28 | 2013-08-29 |  | 15.5d |  |
| 42 |  | Vehicle inspection checklist | 5d | 2013-08-30 | 2013-09-05 |  | 10.5d |  |
| 43 |  | Vehicle report panel | 3d | 2013-09-06 | 2013-09-10 |  | 7.5d |  |
| 44 |  | Backend information collection panel | 3d | 2013-09-11 | 2013-09-13 |  | 0d |  |
| 45 | 1.4.3 | **iOS version** | 28d | 2013-08-01 | 2013-09-10 | 8 | 3.5d |  |
| 46 | 1.4.3.1 | **Logic** | 9.5d | 2013-08-01 | 2013-08-14 |  | 17d |  |
| 47 |  | Application architecture | 1d | 2013-08-01 | 2013-08-02 |  | 25.5d |  |
| 48 |  | GPS manager | 0.5d | 2013-08-08 | 2013-08-08 |  | 21d |  |
| 49 |  | Network interactions | 4d | 2013-08-02 | 2013-08-08 |  | 21.5d |  |
| 50 |  | Internal data model | 3d | 2013-08-09 | 2013-08-13 |  | 18d |  |
| 51 |  | Push notifications | 1d | 2013-08-14 | 2013-08-14 |  | 17d |  |
| 52 | 1.4.3.2 | **UI** | 18.5d | 2013-08-15 | 2013-09-10 | 46 | 3.5d |  |
| 53 |  | Menu screen | 1d | 2013-08-15 | 2013-08-15 |  | 21d |  |
| 54 |  | Settings screen | 3d | 2013-08-16 | 2013-08-20 |  | 18d |  |
| 55 |  | Signature screen(with able to crope, rotate and zoom image) | 2d | 2013-08-21 | 2013-08-22 |  | 16d |  |
| 56 |  | Stored documents screen | 3d | 2013-08-23 | 2013-08-27 |  | 13d |  |
| 57 |  | Controller for dynamic checklists(FR_8 - FR_11, FR_13 - FR_17) | 5d | 2013-08-28 | 2013-09-03 |  | 8d |  |
| 58 |  | Daily Inspection Checklist Review screen | 2d | 2013-09-04 | 2013-09-05 |  | 6d |  |
| 59 |  | WebView for iPad version | 0.5d | 2013-09-06 | 2013-09-06 |  | 5.5d |  |
| 60 |  | Adaptation UI for iPad version | 2d | 2013-09-06 | 2013-09-10 |  | 3.5d |  |
| 61 | 1.4.4 | **Android version** | 28.5d | 2013-08-01 | 2013-09-10 |  | 3d |  |
| 62 | 1.4.4.1 | **Logic** | 13d | 2013-08-01 | 2013-08-20 |  | 13.5d |  |
| 63 |  | Application architecture | 1.5d | 2013-08-01 | 2013-08-02 |  | 25d |  |
| 64 |  | Network interaction (REST API) | 4d | 2013-08-05 | 2013-08-08 |  | 21d |  |
| 65 |  | Geolocation | 1d | 2013-08-09 | 2013-08-09 |  | 20d |  |
| 66 |  | Internal data model | 4d | 2013-08-12 | 2013-08-15 |  | 16d |  |
| 67 |  | Integration Google Cloud Messaging(instant alerts) | 2.5d | 2013-08-16 | 2013-08-20 |  | 13.5d |  |
| 68 | 1.4.4.2 | **Graphic and UI** | 15.5d | 2013-08-20 | 2013-09-10 | 62 | 3d |  |
| 69 |  | Menu screen | 1d | 2013-08-20 | 2013-08-21 |  | 17.5d |  |
| 70 |  | Settings screen | 2d | 2013-08-21 | 2013-08-23 |  | 15.5d |  |

| ID | WBS | Task | Duration | Start | Finish | Predecessors | Total float | Constraint |
| --- | --- | --- | --- | --- | --- | --- | --- | --- |
| 71 |  | Signature screen(crope/rotate/zoom image) | 3d | 2013-08-23 | 2013-08-28 |  | 12.5d |  |
| 72 |  | Stored documents screen | 2d | 2013-08-28 | 2013-08-30 |  | 10.5d |  |
| 73 |  | Dynamically screens with checklists | 5d | 2013-08-30 | 2013-09-06 |  | 5.5d |  |
| 74 |  | Daily Inspection Checklist Review screen | 2d | 2013-09-06 | 2013-09-10 |  | 3.5d |  |
| 75 |  | Database viewer screen(Webview) for tablet version | 0.5d | 2013-09-10 | 2013-09-10 |  | 3d |  |
| 76 | 1.5 | **Stabilization** | 8d | 2013-09-13 | 2013-09-25 | 15 | 0d |  |
| 77 |  | Continues Integration | 0d | 2013-09-13 | 2013-09-13 | 28 | 4.63d |  |
| 78 |  | Test cases execution | 8d | 2013-09-16 | 2013-09-25 |  | 0d |  |
| 79 |  | Defect fixing (~15% from development) | 3.37d | 2013-09-16 | 2013-09-19 | 77 | 4.63d |  |
| 80 | 1.6 | **Deployment** | 1d | 2013-09-26 | 2013-09-26 | 76 | 0d |  |
| 81 |  | System assembly and deployment | 0.5d | 2013-09-26 | 2013-09-26 |  | 0.5d |  |
| 82 |  | Deployment Android version | 1d | 2013-09-26 | 2013-09-26 |  | 0d |  |
| 83 |  | Deployment iOS version | 1d | 2013-09-26 | 2013-09-26 |  | 0d |  |
| 84 |  | Web Frontend IE7+ ReadOnly version | 5d | 2013-10-21 | 2013-10-28 |  | 20.38d | start no earlier than 2013-10-21 |
| 85 | 1.8 | **Risk Management** | 24d | 2013-09-27 | 2013-10-30 | 80 | 0d |  |
| 86 |  | Sick leaves and vacations | 10d | 2013-09-27 | 2013-10-10 |  | 0d |  |
| 87 |  | Additional time for functional requirements clarification | 10d | 2013-10-11 | 2013-10-24 | 86 | 0d |  |
| 88 |  | Third-party environment and components issues | 4d | 2013-10-25 | 2013-10-30 | 87 | 0d |  |
| 89 | 1.9 | **Additional Issues** | 17.5d | 2013-10-31 | 2013-11-26 | 85 | 0d |  |
| 90 |  | Lost password | 1d | 2013-10-31 | 2013-10-31 |  | 16.5d |  |
| 91 |  | Web Frontend IE7+ Full version | 17.5d | 2013-10-31 | 2013-11-26 |  | 0d |  |

## Version 2 (saved 2013-10-22)

Note of the change: Plant IDs are case-sensitive

Last finish stays 2013-11-26.

Added:

| ID | Task | Duration | Start | Finish | Resources |
| --- | --- | --- | --- | --- | --- |
| 91 | Notification reminder | 1d? | 2013-11-04 | 2013-11-04 | PHP Developer 1 |
| 92 | Action List Email Setting | 1d? | 2013-10-31 | 2013-10-31 | PHP Developer 1 [50%] |

Changed:

| ID | Task | Start | Finish | Duration | Total float |
| --- | --- | --- | --- | --- | --- |
| 1 | **SafeStart App & Web-server Project** |  |  | 98.5d → 98.5d? |  |
| 89 | **Additional Issues** |  |  | 17.5d → 17.5d? |  |
| 90 | Lost password | 2013-10-31 → 2013-11-01 (+1d) | 2013-10-31 → 2013-11-01 (+1d) |  | 16.5d → 15.5d |

## Version 3 (saved 2013-10-23)

Note of the change: fix

Last finish stays 2013-11-26.

Added:

| ID | Task | Duration | Start | Finish | Constraint | Resources |
| --- | --- | --- | --- | --- | --- | --- |
| 85 | Client side architecture and layout (based on Ext.JS application) | 2d | 2013-07-11 | 2013-07-12 |  | WEB Developer |
| 86 | Sign in\Sign up page (based on Ext.JS components) | 1d | 2013-07-15 | 2013-07-15 |  | WEB Developer |
| 87 | Panel access according to ACL | 1d | 2013-07-16 | 2013-07-16 |  | WEB Developer |
| 88 | Vehicles Read Only View Panel | 1d | 2013-07-10 | 2013-07-10 |  | WEB Developer |
| 98 | Ubdating Ext.JS theme | 2d | 2013-11-01 | 2013-11-20 |  | HTML Coder |
| 99 | Accounts management (based on Ext.JS components) | 0.5d | 2013-11-01 | 2013-11-01 | start no earlier than 2013-11-01 | WEB Developer |
| 100 | User moderation and subscription (based on Ext.JS components) | 0.5d | 2013-11-05 | 2013-11-05 |  | WEB Developer |
| 101 | User settings (profile) (based on Ext.JS components) | 0.5d | 2013-11-12 | 2013-11-12 |  | WEB Developer |
| 102 | Custom field for vehicle (based on Ext.JS components) | 4d | 2013-11-05 | 2013-11-13 |  | WEB Developer |
| 103 | Vehicles management (based on Ext.JS components) | 1d | 2013-11-13 | 2013-11-14 |  | WEB Developer |
| 104 | Alerts notification | 2d | 2013-11-04 | 2013-11-15 |  | WEB Developer |
| 105 | Vehicle inspection checklist | 3d | 2013-11-18 | 2013-11-21 |  | WEB Developer |
| 106 | Vehicle report panel | 2d | 2013-11-21 | 2013-11-25 |  | WEB Developer |
| 107 | Backend information collection panel | 2d | 2013-10-31 | 2013-11-26 |  | WEB Developer |

Changed:

| ID | Task | Start | Finish | Duration | Total float | Other |
| --- | --- | --- | --- | --- | --- | --- |
| 1 | **SafeStart App & Web-server Project** |  |  | 98.5d? → 98.5d |  |  |
| 84 | **Web Frontend IE7+ ReadOnly version** | 2013-10-21 → 2013-07-10 (-103d) | 2013-10-28 → 2013-07-16 (-104d) |  | 20.38d → 93.5d | constraint start no earlier than 2013-10-21 → none; resources WEB Developer → none |
| 93 | **Additional Issues** |  |  | 17.5d? → 17.5d |  |  |
| 95 | Notification reminder |  |  | 1d? → 1d |  |  |
| 96 | Action List Email Setting |  |  | 1d? → 1d |  |  |
| 97 | **Web Frontend IE7+ Full version** |  |  |  |  | resources WEB Developer → none |

## Version 4 (saved 2013-12-13)

Note of the change: fix

Last finish 2013-11-26 → 2014-01-01 (+36d).

Added:

| ID | Task | Duration | Start | Finish | Resources |
| --- | --- | --- | --- | --- | --- |
| 97 | WEB CRs | 1.25d | 2013-12-06 | 2013-12-09 | PHP Developer 1 |
| 98 | iOS CRs | 1.5d | 2013-12-06 | 2013-12-09 | iOS developer |
| 99 | Android CRs | 1.5d | 2013-12-06 | 2013-12-09 | Android developer |

Changed:

| ID | Task | Start | Finish | Duration | Total float |
| --- | --- | --- | --- | --- | --- |
| 1 | **SafeStart App & Web-server Project** |  | 2013-11-26 → 2014-01-01 (+36d) | 98.5d → 123.62d |  |
| 85 | Client side architecture and layout (based on Ext.JS application) | 2013-07-11 → 2013-07-10 (-1d) | 2013-07-12 → 2013-07-11 (-1d) |  | 95.5d → 121.62d |
| 86 | Sign in\Sign up page (based on Ext.JS components) | 2013-07-15 → 2013-07-12 (-3d) | 2013-07-15 → 2013-07-12 (-3d) |  | 94.5d → 120.62d |
| 87 | Panel access according to ACL | 2013-07-16 → 2013-07-15 (-1d) | 2013-07-16 → 2013-07-15 (-1d) |  | 79d → 119.62d |
| 88 | Vehicles Read Only View Panel | 2013-07-10 → 2013-07-16 (+6d) | 2013-07-10 → 2013-07-16 (+6d) |  | 83d → 118.62d |
| 93 | **Additional Issues** | 2013-10-31 → 2013-12-06 (+36d) | 2013-11-26 → 2014-01-01 (+36d) |  | 0d → none |
| 94 | Lost password | 2013-11-01 → 2013-12-09 (+38d) | 2013-11-01 → 2013-12-10 (+39d) |  | 1d → 15.25d |
| 95 | Notification reminder | 2013-11-04 → 2013-12-10 (+36d) | 2013-11-04 → 2013-12-11 (+37d) |  | 14.5d → 14.25d |
| 96 | Action List Email Setting | 2013-10-31 → 2013-12-11 (+41d) | 2013-10-31 → 2013-12-12 (+42d) |  | 16.5d → 13.25d |
| 100 | **Web Frontend IE7+ Full version** | 2013-10-31 → 2013-12-06 (+36d) | 2013-11-26 → 2013-12-30 (+34d) | 17.5d → 15.5d | 0d → 2d |
| 101 | Ubdating Ext.JS theme | 2013-11-01 → 2013-12-06 (+35d) | 2013-11-20 → 2013-12-24 (+34d) |  | 3.88d → 5.5d |
| 102 | Accounts management (based on Ext.JS components) | 2013-11-01 → 2013-12-27 (+56d) | 2013-11-01 → 2013-12-27 (+56d) |  | 15.88d → 3d |
| 103 | User moderation and subscription (based on Ext.JS components) | 2013-11-05 → 2013-12-27 (+52d) | 2013-11-05 → 2013-12-30 (+55d) |  | 14d → 2.5d |
| 104 | User settings (profile) (based on Ext.JS components) | 2013-11-12 → 2013-12-30 (+48d) | 2013-11-12 → 2013-12-30 (+48d) |  | 10d → 2d |
| 105 | Custom field for vehicle (based on Ext.JS components) | 2013-11-05 → 2013-12-06 (+31d) | 2013-11-13 → 2013-12-12 (+29d) |  | 9d → 13.5d |
| 106 | Vehicles management (based on Ext.JS components) | 2013-11-13 → 2013-12-26 (+43d) | 2013-11-14 → 2013-12-27 (+43d) |  | 8d → 3.5d |
| 107 | Alerts notification | 2013-11-04 → 2013-12-17 (+43d) | 2013-11-15 → 2013-12-19 (+34d) |  | 6.88d → 8.5d |
| 108 | Vehicle inspection checklist | 2013-11-18 → 2013-12-12 (+24d) | 2013-11-21 → 2013-12-17 (+26d) |  | 2.88d → 10.5d |
| 109 | Vehicle report panel | 2013-11-21 → 2013-12-19 (+28d) | 2013-11-25 → 2013-12-23 (+28d) |  | 0.88d → 6.5d |
| 110 | Backend information collection panel | 2013-10-31 → 2013-12-23 (+53d) | 2013-11-26 → 2013-12-26 (+30d) |  | 0d → 4.5d |
